Schedule from Planner, 2010-06-07 to 2010-07-27.

## Calendars

- Predeterminado: Mon-Fri 08:00-12:00, 13:00-17:00; Sat-Sun off. Exceptions (off unless hours are given): 2010-06-30 to 2010-07-02, 2010-07-05 to 2010-07-06.

## Resources

| Resource |
| --- |
| Eladio |

## Schedule

| ID | WBS | Task | Start | Finish | Predecessors | Complete | Resources | Work |
| --- | --- | --- | --- | --- | --- | --- | --- | --- |
| 1 | 1 | **mygolfcard** | 2010-06-07 | 2010-07-27 |  |  |  | 332h |
| 2 | 1.1 | Planificación | 2010-06-07 | 2010-06-07 |  | 100% |  | 8h |
| 3 | 1.2 | **Modelo de Datos** | 2010-06-08 | 2010-06-09 | 2 | 100% |  | 36h |
| 4 | 1.2.1 | Log Histórico | 2010-06-08 | 2010-06-09 |  | 100% | Eladio | 12h |
| 5 | 1.2.2 | Perfiles - Permisos | 2010-06-08 | 2010-06-09 |  | 100% | Eladio | 12h |
| 6 | 1.2.3 | Privacidad | 2010-06-08 | 2010-06-09 |  | 100% | Eladio | 12h |
| 7 | 1.3 | **Alcance versión I** | 2010-06-09 | 2010-07-27 | 3 |  |  | 288h |
| 8 | 1.3.1 | Log operaciones | 2010-06-09 | 2010-06-10 |  | 100% |  | 8h |
| 9 | 1.3.2 | **Seguridad v.1.0** | 2010-06-10 | 2010-06-14 | 8 |  |  | 32h |
| 10 | 1.3.2.1 | Implementación Permisos | 2010-06-10 | 2010-06-14 |  | 90% |  | 16h |
| 11 | 1.3.2.2 | Implementación privacidad (público vs privado) | 2010-06-10 | 2010-06-14 |  | 100% |  | 16h |
| 12 | 1.3.3 | **Courses** | 2010-06-14 | 2010-06-23 | 9 |  |  | 64h |
| 13 | 1.3.3.1 | Alta sólo ADMIN | 2010-06-14 | 2010-06-15 |  | 100% |  | 8h |
| 14 | 1.3.3.2 | Galería de Imágenes | 2010-06-15 | 2010-06-16 | 13 | 100% |  | 8h |
| 15 | 1.3.3.3 | Geoposicionaminento fijo | 2010-06-16 | 2010-06-17 | 14 | 100% |  | 8h |
| 16 | 1.3.3.4 | Campos de Madrid | 2010-06-17 | 2010-06-18 | 15 |  |  | 8h |
| 17 | 1.3.3.5 | **Revisión CRUD Courses** | 2010-06-18 | 2010-06-23 | 16 |  |  | 32h |
| 18 | 1.3.3.5.1 | **Revisión de estilo - FF/IE/OP** | 2010-06-18 | 2010-06-23 |  |  |  | 32h |
| 19 | 1.3.3.5.1.1 | NEW - EDIT | 2010-06-18 | 2010-06-21 |  | 100% |  | 8h |
| 20 | 1.3.3.5.1.2 | SHOW | 2010-06-21 | 2010-06-22 | 19 | 100% |  | 8h |
| 21 | 1.3.3.5.1.3 | **INDEX** | 2010-06-22 | 2010-06-23 | 20 | 100% |  | 16h |
| 22 | 1.3.3.5.1.3.1 | Vista por defecto | 2010-06-22 | 2010-06-23 |  | 100% |  | 8h |
| 23 | 1.3.3.5.1.3.2 | Revisar estilos - FF/IE/OP | 2010-06-22 | 2010-06-23 |  | 100% |  | 8h |
| 24 | 1.3.4 | **Matches** | 2010-06-23 | 2010-07-07 | 12 |  |  | 40h |
| 25 | 1.3.4.1 | Revisar estilos | 2010-06-23 | 2010-06-24 |  |  |  | 8h |
| 26 | 1.3.4.2 | Alta partidos | 2010-06-24 | 2010-06-28 | 25 |  |  | 16h |
| 27 | 1.3.4.3 | Privacidad en visualización | 2010-06-28 | 2010-07-07 | 26 |  |  | 16h |

| ID | WBS | Task | Start | Finish | Predecessors | Work |
| --- | --- | --- | --- | --- | --- | --- |
| 28 | 1.3.5 | **Home** | 2010-07-07 | 2010-07-12 | 24 | 24h |
| 29 | 1.3.5.1 | Revisión de textos | 2010-07-07 | 2010-07-08 |  | 8h |
| 30 | 1.3.5.2 | Alta nuevos usuarios | 2010-07-08 | 2010-07-12 | 29 | 16h |
| 31 | 1.3.6 | **Inicio** | 2010-07-12 | 2010-07-15 | 28 | 24h |
| 32 | 1.3.6.1 | Estilos | 2010-07-12 | 2010-07-13 |  | 8h |
| 33 | 1.3.6.2 | Revisión textos de ayuda | 2010-07-13 | 2010-07-14 | 32 | 8h |
| 34 | 1.3.6.3 | Definir opciones finales | 2010-07-14 | 2010-07-15 | 33 | 8h |
| 35 | 1.3.7 | Menú | 2010-07-15 | 2010-07-16 | 31 | 8h |
| 36 | 1.3.8 | **Datos Personales** | 2010-07-16 | 2010-07-20 | 35 | 16h |
| 37 | 1.3.8.1 | Modificación Datos | 2010-07-16 | 2010-07-19 |  | 8h |
| 38 | 1.3.8.2 | Recuperación password | 2010-07-19 | 2010-07-20 | 37 | 8h |
| 39 | 1.3.9 | **Stats** | 2010-07-20 | 2010-07-26 | 36 | 32h |
| 40 | 1.3.9.1 | Definir 2-3 básicas | 2010-07-20 | 2010-07-23 |  | 24h |
| 41 | 1.3.9.2 | Estilos | 2010-07-23 | 2010-07-26 | 40 | 8h |
| 42 | 1.3.10 | **Revisión final** | 2010-07-26 | 2010-07-27 | 39 | 40h |
| 43 | 1.3.10.1 | Revisión CRUD Matches | 2010-07-26 | 2010-07-27 |  | 8h |
| 44 | 1.3.10.2 | Revisión modelo de datos | 2010-07-26 | 2010-07-27 |  | 8h |
| 45 | 1.3.10.3 | Revisión formularios (obligatorios) | 2010-07-26 | 2010-07-27 |  | 8h |
| 46 | 1.3.10.4 | Revisión presentación tarjeta | 2010-07-26 | 2010-07-27 |  | 8h |
| 47 | 1.3.10.5 | Revisión Estadísticas | 2010-07-26 | 2010-07-27 |  | 8h |
